# diagrama de gantt Fresh Style

Schedule from MS Project, 2026-04-22 to 2026-09-16, costs in COP, A marks actual dates.

## Calendars

- Fresh style 1: Mon-Fri 09:00-13:00, 15:00-19:00; Sat-Sun off.

## Resources

| Resource | Rate |
| --- | --- |
| Desarrollador | 25309 |
| Diseñador UI/UX | 18982 |
| Analista | 22145 |
| TESTER | 22982 |
| Líder de proyecto | 50472 |
| Servidores (app nube) | 450000 |
| Licencia de software (libres) |  |
| Equipos de computo | 15500000 |
| Licencia movil (anual) | 550000 |
| Wifi |  |
| Servicios públicos |  |
| Transporte |  |
| Hosting |  |
| Dominio web |  |
| Servidor/ base de datos |  |
| Desarrollador senior | 40000 |

## Schedule

| ID | WBS | Task | Type | Duration | Start | Finish | Predecessors | Complete | Total slack | Resources | Work | Actual work | Cost | Actual cost |
| --- | --- | --- | --- | --- | --- | --- | --- | --- | --- | --- | --- | --- | --- | --- |
| 1 | 1 | **1. Inicio del proyecto** |  | 10d | 2026-04-22 A | 2026-05-05 A |  | 100% |  |  | 64h | 64h | 1,417,280 | 1,417,280 |
| 2 | 1.1 | Recolección de información |  | 1w | 2026-04-22 A | 2026-04-28 A |  | 100% |  | Analista; Líder de proyecto | 40h | 40h | 885,800 | 885,800 |
| 3 | 1.2 | Entrevista a empresa | milestone | 0d | 2026-04-30 A | 2026-04-30 A | 2 | 100% |  | Líder de proyecto |  |  |  |  |
| 4 | 1.3 | Encuesta a clientes |  | 3d | 2026-05-01 A | 2026-05-05 A | 2 | 100% |  | Analista; Líder de proyecto | 24h | 24h | 531,480 | 531,480 |
| 5 | 2 | **2. Análisis de requisitos** |  | 10d | 2026-05-06 A | 2026-05-19 A |  | 100% |  |  | 160h | 160h | 4,676,280 | 4,676,280 |
| 6 | 2.1 | Análisis de necesidades |  | 1w | 2026-05-06 A | 2026-05-12 A | 4 | 100% |  | Analista; Líder de proyecto | 40h | 40h | 885,800 | 885,800 |
| 7 | 2.2 | Identificación de usuarios |  | 1w | 2026-05-06 A | 2026-05-12 A | 4 | 100% |  | Líder de proyecto | 40h | 40h | 2,018,880 | 2,018,880 |
| 8 | 2.3 | Requisitos funcionales |  | 1w | 2026-05-13 A | 2026-05-19 A | 7 | 100% |  | Analista | 40h | 40h | 885,800 | 885,800 |
| 9 | 2.4 | Requisitos no funcionales |  | 1w | 2026-05-13 A | 2026-05-19 A | 7 | 100% |  | Analista | 40h | 40h | 885,800 | 885,800 |
| 10 | 3 | **3. Elaboración del IEEE 830** |  | 6d | 2026-05-20 A | 2026-05-27 A |  | 100% |  |  | 152h | 152h | 4,725,736 | 4,725,736 |
| 11 | 3.1 | Introducción y descripción general |  | 48h | 2026-05-20 A | 2026-05-27 A | 9 | 100% |  | Líder de proyecto | 48h | 48h | 2,422,656 | 2,422,656 |
| 12 | 3.2 | Requisitos funcionales |  | 5d | 2026-05-20 A | 2026-05-26 A | 9 | 100% |  | Analista | 40h | 40h | 885,800 | 885,800 |
| 13 | 3.3 | Requisitos no funcionales |  | 3d | 2026-05-20 A | 2026-05-22 A | 9 | 100% |  | Analista | 24h | 24h | 531,480 | 531,480 |
| 14 | 3.4 | Hito: IEEE 830 terminado |  | 1w | 2026-05-20 A | 2026-05-26 A | 9 | 100% |  | Analista; Líder de proyecto | 40h | 40h | 885,800 | 885,800 |
| 15 | 4 | **4. Modelado del sistema** |  | 5d | 2026-05-27 | 2026-06-02 |  |  | 76d |  | 80h |  | 2,612,360 |  |
| 16 | 4.1 | Diagrama BPMN |  | 1w | 2026-05-27 | 2026-06-02 | 14 |  | 76d | Desarrollador; Desarrollador senior | 80h |  | 2,612,360 |  |
| 17 | 5 | **Uml** |  | 5d | 2026-06-05 A | 2026-06-11 A |  | 100% |  |  | 120h | 120h | 2,024,720 | 2,024,720 |
| 18 | 5.1 | Diagrama de casos de uso |  | 1w | 2026-06-05 A | 2026-06-11 A | 16 | 100% |  | Desarrollador; Desarrollador senior | 40h | 40h | 1,012,360 | 1,012,360 |
| 19 | 5.2 | Diagrama de clases |  | 1w | 2026-06-05 A | 2026-06-11 A | 16 | 100% |  | Desarrollador; Desarrollador senior | 40h | 40h | 1,012,360 | 1,012,360 |
| 20 | 5.3 | Diagrama de despliegue |  | 1w | 2026-06-05 A | 2026-06-11 A | 16 | 100% |  | Desarrollador; Líder de proyecto | 40h | 40h |  |  |
| 21 | 6 | **5. Diseño del sistema** |  | 20d | 2026-06-11 A | 2026-07-08 A |  | 100% |  |  | 400h | 400h | 9,364,360 | 9,364,360 |
| 22 | 6.1 | Diseño de interfaces |  | 3w | 2026-06-11 A | 2026-07-01 A | 20 | 100% |  | Diseñador UI/UX | 120h | 120h | 2,277,840 | 2,277,840 |
| 23 | 6.2 | Diseño de base de datos |  | 4w | 2026-06-11 A | 2026-07-08 A | 20 | 100% |  | Desarrollador | 160h | 160h | 4,049,440 | 4,049,440 |
| 24 | 6.3 | Diseño de arquitectura |  | 3w | 2026-06-11 A | 2026-07-01 A | 20 | 100% |  | Desarrollador | 120h | 120h | 3,037,080 | 3,037,080 |

| ID | WBS | Task | Type | Duration | Start | Finish | Predecessors | Complete | Total slack | Constraint | Resources | Work | Actual work | Cost | Actual cost |
| --- | --- | --- | --- | --- | --- | --- | --- | --- | --- | --- | --- | --- | --- | --- | --- |
| 25 | 7 | **6. Desarrollo** |  | 10d | 2026-07-09 A | 2026-07-22 A |  | 100% |  |  |  | 200h | 200h | 5,061,800 | 5,061,800 |
| 26 | 7.1 | Configuración del entorno | milestone | 0w | 2026-07-09 A | 2026-07-09 A | 24 | 100% |  |  | Desarrollador; Desarrollador senior |  |  |  |  |
| 27 | 7.2 | Desarrollo de usuarios y perfiles |  | 1w | 2026-07-09 A | 2026-07-15 A | 24 | 100% |  |  | Desarrollador; Líder de proyecto | 40h | 40h | 1,012,360 | 1,012,360 |
| 28 | 7.3 | Desarrollo de establecimientos |  | 1w | 2026-07-09 A | 2026-07-15 A | 24 | 100% |  | start no earlier than 2026-04-22 | Desarrollador; Líder de proyecto | 40h | 40h | 1,012,360 | 1,012,360 |
| 29 | 7.4 | Desarrollo de reservas |  | 1w | 2026-07-09 A | 2026-07-15 A | 24 | 100% |  | start no earlier than 2026-07-09 | Desarrollador; Líder de proyecto | 40h | 40h | 1,012,360 | 1,012,360 |
| 30 | 7.5 | Integración de módulos |  | 2w | 2026-07-09 A | 2026-07-22 A | 24 | 100% |  | start no earlier than 2026-07-09 | Desarrollador; Desarrollador senior | 80h | 80h | 2,024,720 | 2,024,720 |
| 31 | 8 | **7. Pruebas** |  | 5d | 2026-07-23 | 2026-07-29 |  |  | 0d |  |  | 160h |  | 3,677,120 |  |
| 32 | 8.1 | Pruebas funcionales |  | 1w | 2026-07-23 | 2026-07-29 | 30 |  | 35d | start no earlier than 2026-07-23 | TESTER | 40h |  | 919,280 |  |
| 33 | 8.2 | Pruebas de seguridad |  | 1w | 2026-07-23 | 2026-07-29 | 30 |  | 35d | start no earlier than 2026-07-23 | TESTER | 40h |  | 919,280 |  |
| 34 | 8.3 | Pruebas de rendimiento |  | 1w | 2026-07-23 | 2026-07-29 | 30 |  | 35d | start no earlier than 2026-07-23 | TESTER | 40h |  | 919,280 |  |
| 35 | 8.4 | Pruebas de compatibilidad y responsividad |  | 1w | 2026-07-23 | 2026-07-29 | 30 |  | 0d | start no earlier than 2026-07-23 | TESTER | 40h |  | 919,280 |  |
| 36 | 9 | 8. Corrección de errores |  | 3w | 2026-07-30 | 2026-08-19 | 35 |  | 0d |  | Desarrollador; Desarrollador senior | 240h |  | 7,837,080 |  |
| 37 | 10 | **9. Implementación** |  | 5d | 2026-08-20 | 2026-08-26 |  |  | 0d |  |  | 80h |  | 3,481,240 |  |
| 38 | 10.1 | Configuración del servidor |  | 1w | 2026-08-20 | 2026-08-26 | 36 |  | 15d | start no earlier than 2026-08-20 | Desarrollador; Servidores (app nube) | 40h |  | 1,462,360 |  |
| 39 | 10.2 | Publicación del aplicativo |  | 1w | 2026-08-20 | 2026-08-26 | 36 |  | 0d | start no earlier than 2026-08-20 | Líder de proyecto; Dominio web [0.1%] | 40h |  | 2,018,880 |  |
| 40 | 11 | **10. Capacitación y entrega** |  | 10d | 2026-08-27 | 2026-09-09 |  |  | 0d |  |  | 480h |  | 15,228,960 |  |
| 41 | 11.1 | Capacitación de usuarios |  | 2w | 2026-08-27 | 2026-09-09 | 39 |  | 5d | start no earlier than 2026-08-26 | Líder de proyecto | 80h |  | 4,037,760 |  |
| 42 | 11.2 | Entrega final |  | 2w | 2026-08-27 | 2026-09-09 | 39 |  | 0d | start no earlier than 2026-08-26 | Desarrollador; Diseñador UI/UX; TESTER; Analista; Líder de proyecto | 400h |  | 11,191,200 |  |
| 43 | 12 | 11. Soporte y mantenimiento |  | 1w | 2026-09-10 | 2026-09-16 | 42 |  | 0d |  | Desarrollador | 40h |  | 1,012,360 |  |
